# Рабочий план проекта Интеграл БТК-Текстиль

Schedule from MS Project, 2018-04-23 to 2018-07-20, A marks actual dates.

## Calendars

- Стандартный: Mon-Fri 09:00-13:00, 14:00-18:00; Sat-Sun off.

## Schedule

| ID | WBS | Task | Type | Duration | Start | Finish | Predecessors | Complete | Remaining | Total slack |
| --- | --- | --- | --- | --- | --- | --- | --- | --- | --- | --- |
| 1 | 1 | **Реализация модуля бизнес-аналитики по данным, получаемым из datatex, bfg-qrm, системы внутрицеховой логистики** |  | 65d | 2018-04-23 A | 2018-07-20 |  | 24% | 49.13d | 0d |
| 2 | 1.1 | **Разработка коннектора / модуля интеграции с Datatex** |  | 20d | 2018-05-22 A | 2018-06-18 |  | 56% | 8.78d | 0d |
| 3 | 1.1.1 | Сформировать требования к объему и составу данных, получаемых из модуля интеграции с Datatex | manual | 20d | 2018-05-22 A | 2018-06-18 |  | 60% | 8d |  |
| 4 | 1.1.2 | **Разработка схемы, модели данных и прикладных модулей интеграции с Datatex** |  | 20d | 2018-05-22 A | 2018-06-18 |  | 61% | 7.83d | 0d |
| 5 | 1.1.2.1 | **Исследование БД Oracle ERP Datatex БТК-Текстиль в части определения таблиц хранения и взаимосвязи данных по** |  | 15d | 2018-05-22 A | 2018-06-11 |  | 50% | 7.5d | 0d |
| 6 | 1.1.2.1.1 | Клиентским заказам, Производственным заказам, Номенклатуре, Маршрутным листам (штрих-код маршрутного листа, ИД и наименование операции, Класс РЦ) | manual | 11d | 2018-05-22 A | 2018-06-05 |  | 50% | 5.5d |  |
| 7 | 1.1.2.1.2 | Временным данным по нормированию операций, Сырью и Материалам (ИД_СиМ), Тарам (ИД_тары — тип тары), Данным по состоянию незавершенного производства | manual | 15d | 2018-05-22 A | 2018-06-11 |  | 50% | 7.5d |  |
| 8 | 1.1.2.2 | Проработка возможности использования Oracle APEX и Oracle ORDS для формирования запросов в БД Oracle ERP Datatex БТК-Текстиль | manual | 5d | 2018-06-12 A | 2018-06-18 | 5 |  | 5d |  |
| 9 | 1.1.2.3 | **Разработка БД в составе коннектора для хранения** |  | 7d | 2018-05-22 A | 2018-05-30 |  | 88% | 0.88d | 0d |
| 10 | 1.1.2.3.1 | Стыковочной таблицы: по технологии «Номенклатура_ИД операции – данные нормирования, класс РЦ»; по спецификации «Номенклатура — ИД_СиМ — количество» | manual | 7d | 2018-05-22 A | 2018-05-30 A |  | 100% |  |  |
| 11 | 1.1.2.3.2 | Списка оборудования, РЦ, ресурсы | manual | 7d | 2018-05-22 A | 2018-05-30 |  | 75% | 1.75d |  |
| 12 | 1.1.2.4 | **Разработка механизма загрузки данных из БД Oracle ERP Datatex БТК-Текстиль в разрабатываемую БД в составе коннектора** |  | 7d | 2018-05-22 A | 2018-05-30 |  | 75% | 1.75d |  |
| 13 | 1.1.2.4.1 | Номенклатура — номер операции — ИД операции» для основных маршрутов | manual | 7d | 2018-05-22 A | 2018-05-30 |  | 75% | 1.75d |  |
| 14 | 1.1.2.4.2 | «Производственный заказ – номенклатура – номер операции — ИД операции — штрих-код маршрутного листа» для альтернативных маршрутов / измененных маршрутов под конкретную партию | manual | 7d | 2018-05-22 A | 2018-05-30 |  | 75% | 1.75d |  |
| 15 | 1.1.2.4.3 | «ИД_СиМ — наименование СиМ — единица изменения СиМ» | manual | 7d | 2018-05-22 A | 2018-05-30 |  | 75% | 1.75d |  |
| 16 | 1.1.2.4.4 | «ИД_тары — тип тары» | manual | 7d | 2018-05-22 A | 2018-05-30 |  | 75% | 1.75d |  |
| 17 | 1.1.2.5 | **Дополнение выгруженных данных необходимой информацией для построения модели** |  | 10d | 2018-05-22 A | 2018-06-04 |  | 50% | 5d | 0d |
| 18 | 1.1.2.5.1 | Список РЦ | manual | 10d | 2018-05-22 A | 2018-06-04 |  | 50% | 5d |  |
| 19 | 1.1.2.5.2 | Список оборудования | manual | 10d | 2018-05-22 A | 2018-06-04 |  | 50% | 5d |  |
| 20 | 1.1.2.5.3 | Дополнение «Номенклатура — номер операции — ИД операции» необходимым оборудованием и ресурсами для выполнения операции «номер операции — ИД операции» | manual | 10d | 2018-05-22 A | 2018-06-04 |  | 50% | 5d |  |
| 21 | 1.1.2.6 | **Разработка механизма загрузки данных из БД Oracle ERP Datatex БТК-Текстиль в разрабатываемую БД в составе коннектора** |  | 5d | 2018-05-22 A | 2018-05-28 |  | 75% | 1.25d | 0d |
| 22 | 1.1.2.6.1 | По клиентским заказам в виде «ИД_заказа – наименование заказа – номенклатура – количество» | manual | 5d | 2018-05-22 A | 2018-05-28 |  | 75% | 1.25d |  |
| 23 | 1.1.2.6.2 | По производственным заказам в виде «ИД_производственного_заказа- — ИД_клиентского_заказа – номенклатура – количество» | manual | 5d | 2018-05-22 A | 2018-05-28 |  | 75% | 1.25d |  |
| 24 | 1.1.3 | Доработка коннектора Datatex по результатам ПМИ | manual | 11d | 2018-06-04 | 2018-06-18 |  |  |  |  |

Notes:
- 9: Комментарий: БД в составе коннектора разработана на 70-80%, без реальных данных - это только логическая модель. Нужны данные.
- 10: Комментарий: -//-
- 11: Комментарий: -//-
- 12: Комментарий: Движок механизма готов на 80%, нужны реальные данные для его доработки и шлифовки.
- 13: Комментарий: -//-
- 14: Комментарий: -//-
- 15: Комментарий: -//-
- 16: Комментарий: -//-
- 17: Комментарий: После получения реальных данных.
- 18: Комментарий: -//-
- 19: Комментарий: -//-
- 20: Комментарий: -//-
- 21: Комментарий: Движок механизма готов на 80%, нужны реальные данные для его доработки и шлифовки.
- 22: Комментарий: -//-
- 23: Комментарий: -//-

| ID | WBS | Task | Type | Duration | Start | Finish | Predecessors | Complete | Remaining | Total slack | Комментарий |
| --- | --- | --- | --- | --- | --- | --- | --- | --- | --- | --- | --- |
| 25 | 1.2 | **Разработка коннектора для BFG QRM, CMT (на основе API BFG)** |  | 20d | 2018-05-22 A | 2018-06-18 |  | 18% | 16.35d | 0d |  |
| 26 | 1.2.1 | Сформировать требования к объему и составу данных, получаемых из BFG CMT, QRM | manual | 7d | 2018-05-22 A | 2018-05-30 |  | 35% | 4.55d |  | ??????? |
| 27 | 1.2.2 | Разработка схемы и модели данных для интеграции с BFG CMT, QRM | manual | 8d | 2018-05-31 A | 2018-06-11 | 26 | 15% | 6.8d |  |  |
| 28 | 1.2.3 | Разработка механизмов и событий загрузки данных | manual | 3d | 2018-06-12 | 2018-06-14 | 27 |  |  |  |  |
| 29 | 1.2.4 | Проведение ПМИ и проведение испытаний | manual | 1d | 2018-06-15 | 2018-06-15 | 28 |  |  |  |  |
| 30 | 1.2.5 | Доработка коннектора BFG CMT, QRM по результатам ПМИ | manual | 1d | 2018-06-18 | 2018-06-18 | 29 |  |  |  |  |
| 31 | 1.3 | **Провести исследование вариантов использования имеющихся на рынках систем бизнес-аналитики, выбрать наиболее подходящий для генерации отчетов для работы Системы по разработанным прототипам, приобрести лицензию на систему под проект БТК-Текстиль на условиях** |  | 20d | 2018-04-23 A | 2018-05-18 A | 2 | 100% |  |  |  |
| 32 | 1.3.1 | Анализ Open Source BI систем на рынке (технологические возможности, ценовая политика) | manual | 15d | 2018-04-23 A | 2018-05-11 A |  | 100% |  |  | Выполнено. Выбрана система LuxMS BI из-за простоты. |
| 33 | 1.3.2 | Выбор подходящей BI платформы и заключение соглашения на ее использование под white label | manual | 4d | 2018-05-14 A | 2018-05-17 A | 32 | 100% |  |  | -//- |
| 34 | 1.3.3 | Разворачивание системы для разработки на площадке БТК-Текстиль | manual | 1d | 2018-05-18 A | 2018-05-18 A | 33 | 100% |  |  | Насколько я знаю - сделано, проверим. |
| 35 | 1.4 | **Разработка прототипов виджетов и отчетов, необходимых для работы Системы, согласование с Заказчиком** |  | 33d | 2018-05-22 A | 2018-07-05 |  | 57% | 14.2d | 0d |  |
| 36 | 1.4.1 | Формализация списка отчетов | manual | 14d | 2018-05-22 A | 2018-06-08 |  | 50% | 7d |  |  |
| 37 | 1.4.2 | Разработка dashboard и активных виджетов (наполнение для каждого отчета) | manual | 32d | 2018-05-23 A | 2018-07-05 |  | 60% | 12.8d |  |  |
| 38 | 1.5 | **Реализация автоматической генерации настраиваемых отчетов из Системы** |  | 29d | 2018-05-28 | 2018-07-05 |  |  |  | 0d |  |
| 39 | 1.5.1 | Производительность отделки/ткачества/трикотажа в заданном периоде | manual | 10d | 2018-05-28 | 2018-06-08 |  |  |  |  |  |
| 40 | 1.5.2 | Производительность отдельных переделов в заданном периоде | manual | 10d | 2018-05-28 | 2018-06-08 |  |  |  |  |  |
| 41 | 1.5.3 | Средний цикл производства по выбранной номенклатуре | manual | 10d | 2018-06-11 | 2018-06-22 |  |  |  |  |  |
| 42 | 1.5.4 | Среднее время ожидания в очередях перед РЦ в заданном периоде по заданной номенклатуре | manual | 10d | 2018-06-11 | 2018-06-22 |  |  |  |  |  |
| 43 | 1.5.5 | Средняя загрузка оборудования в заданном периоде | manual | 9d | 2018-06-25 | 2018-07-05 |  |  |  |  |  |
| 44 | 1.5.6 | Распределение времени работы оборудования по типам номенклатур / клиентским заказам | manual | 9d | 2018-06-25 | 2018-07-05 |  |  |  |  |  |
| 45 | 1.6 | **Реализация специализированных аналитических отчетов** |  | 20d | 2018-05-28 | 2018-06-22 |  |  |  | 0d |  |
| 46 | 1.6.1 | Анализ потребления сырья и материалов по факту производства выбранного периода по выбранной номенклатуре | manual | 10d | 2018-05-28 | 2018-06-08 |  |  |  |  |  |
| 47 | 1.6.2 | Сравнение результатов планирования в BFG-QRM от различных дат | manual | 10d | 2018-06-11 | 2018-06-22 |  |  |  |  |  |
| 48 | 1.6.3 | История прохождения партии по производству (даты, операции, станки, исполнители, метры) | manual | 10d | 2018-06-11 | 2018-06-22 |  |  |  |  |  |

| ID | WBS | Task | Type | Duration | Start | Finish | Predecessors | Complete | Remaining | Total slack |
| --- | --- | --- | --- | --- | --- | --- | --- | --- | --- | --- |
| 49 | 1.7 | **Реализация системы визуализации движения партий по производству на основании данных из системы внутрицехового позиционирования тары** |  | 15d | 2018-06-04 | 2018-06-22 |  |  |  | 0d |
| 50 | 1.7.1 | Визуализация зон длительного пролеживания (ожидания в очереди на обработку) партий в процессе производства | manual | 15d | 2018-06-04 | 2018-06-22 |  |  |  |  |
| 51 | 1.7.2 | Для группы партий одной номенклатуры или одного клиентского заказа - история движения партий в процессе производства, с цветовым выделением мест максимального пролеживания | manual | 15d | 2018-06-04 | 2018-06-22 |  |  |  |  |
| 52 | 1.7.3 | Для одной выбранной партии - визуализация ее прохождения по производству | manual | 15d | 2018-06-04 | 2018-06-22 |  |  |  |  |
| 53 | 1.8 | **Внутрицеховое позиционирование производственной тары** |  | 65d | 2018-04-23 A | 2018-07-20 |  | 15% | 55d | 0d |
| 54 | 1.8.1 | **Разработка проекта позиционирования производственной тары** |  | 40d | 2018-04-23 A | 2018-06-15 |  | 40% | 24d | 0d |
| 55 | 1.8.1.1 | Провести исследование современных технологий позиционирования и выбрать оптимальную, удовлетворяющую обозначенным ТЗ характеристикам в условиях цеха отделки БТК-Текстиль | manual | 10d | 2018-04-23 A | 2018-05-04 A |  | 100% |  |  |
| 56 | 1.8.1.2 | Разработать проект расстановки стационарных элементов системы позиционирования (якорей) в цехе отделки | manual | 10d | 2018-05-28 | 2018-06-08 |  |  |  |  |
| 57 | 1.8.1.3 | Согласовать проект установки, подключения стационарных элементов системы позиционирования и метод крепления мобильных элементов системы позиционирования (маячков)с БТК-Текстиль | manual | 5d | 2018-06-11 | 2018-06-15 |  |  |  |  |
| 58 | 1.8.2 | **Реализация проекта позиционирования производственной тары** |  | 25d | 2018-06-18 | 2018-07-20 |  |  |  | 0d |
| 59 | 1.8.2.1 | Приобрести маячки и якоря в необходимом количестве, элементы крепления и защиты маячков на таре, материалы для крепления и подключения к сетям электроснабжения и сбора данных якорей | manual | 10d | 2018-06-18 | 2018-06-29 | 57 |  |  |  |
| 60 | 1.8.2.2 | Реализовать программный интерфейс (API) системы позиционирования для передачи данных о позиции тары в системы диспетчеризации и бизнес-аналитики | manual | 5d | 2018-06-18 | 2018-06-22 |  |  |  |  |
| 61 | 1.8.2.3 | Выполнить работы по установке стационарных элементов системы позиционирования (якорей), подключению к сетям электроснабжения и сбора данных, и работы по креплению мобильных элементов системы позиционирования (маячков) на таре | manual | 10d | 2018-07-02 | 2018-07-13 |  |  |  |  |
| 62 | 1.8.2.4 | Провести шеф-монтаж и пуско-наладку системы внутрицехового позиционирования тары | manual | 10d | 2018-07-02 | 2018-07-13 |  |  |  |  |
| 63 | 1.8.2.5 | Разработать ПМИ, провести тестирование и необходимые доработки (мероприятия по калибровке работы системы) | manual | 5d | 2018-07-16 | 2018-07-20 |  |  |  |  |
| 64 | 1.9 | **Разработка и внедрение системы диспетчеризации** |  | 24d | 2018-06-11 | 2018-07-12 |  |  |  | 0d |
| 65 | 1.9.1 | Реализовать прием необходимых данных с datatex через модуль интеграции | manual | 5d | 2018-06-18 | 2018-06-22 |  |  |  |  |
| 66 | 1.9.2 | Реализация приема данных из системы планирования BFG-QRM через имеющийся программный интерфейс | manual | 3d | 2018-06-20 | 2018-06-22 |  |  |  |  |
| 67 | 1.9.3 | Разработка и согласование с Заказчиком печатной формы маршрутных листов. Печатная форма маршрутных листов должна предусматривать наличие штрих-кода, принимаемого и однозначно трактуемого системой CAMS | manual | 5d | 2018-06-25 | 2018-06-29 |  |  |  |  |
| 68 | 1.9.4 | **Разработка прототипов отчетов и согласование с Заказчиком** |  | 15d | 2018-06-11 | 2018-06-29 |  |  |  | 0d |
| 69 | 1.9.4.1 | Сменно-суточные задания с отметками о состоянии исполнения и адаптацией под мобильные устройства | manual | 15d | 2018-06-11 | 2018-06-29 |  |  |  |  |
| 70 | 1.9.4.2 | Текущее состояние по НЗП (сколько партий, метров в разрезе номенклатур) | manual | 15d | 2018-06-11 | 2018-06-29 |  |  |  |  |
| 71 | 1.9.4.3 | Текущий размер очередей перед классом РЦ | manual | 15d | 2018-06-11 | 2018-06-29 |  |  |  |  |
| 72 | 1.9.4.4 | Возраст партий (с момента начала первой операции до текущего времени) в процессе производства | manual | 15d | 2018-06-11 | 2018-06-29 |  |  |  |  |
| 73 | 1.9.4.5 | Время пролеживания партии без обработки | manual | 15d | 2018-06-11 | 2018-06-29 |  |  |  |  |
| 74 | 1.9.4.6 | Текущее положение партии в цехе | manual | 15d | 2018-06-11 | 2018-06-29 |  |  |  |  |

Notes:
- 55: Точность определения положения тары не хуже 1 м / Срок службы датчиков до зарядки или замены батареи не менее 12 месяцев / Частота обновления данных по положению тары не реже, чем 1 раз в секунду
- 56: Проработать обеспечение отсутствия мертвых зон в местах возможного присутствия тары. Разработать надежный метод закрепления мобильных элементов системы позиционирования (маячков) на таре.

| ID | WBS | Task | Type | Duration | Start | Finish | Total slack |
| --- | --- | --- | --- | --- | --- | --- | --- |
| 75 | 1.9.5 | **Разработка настраиваемой системы уведомлений по событиям** |  | 9d | 2018-07-02 | 2018-07-12 | 0d |
| 76 | 1.9.5.1 | Время пролеживания партии перед операцией сушения-ширения после мокрых операций превысило 6 часов | manual | 9d | 2018-07-02 | 2018-07-12 |  |
| 77 | 1.9.5.2 | Размер очереди перед классом РЦ превышает 24 часа | manual | 9d | 2018-07-02 | 2018-07-12 |  |
| 78 | 1.9.5.3 | Более 24 часов партия находится без движения по технологическому маршруту | manual | 9d | 2018-07-02 | 2018-07-12 |  |
| 79 | 1.9.5.4 | Более 1 часа станок не взял ни одной партии в работу, хотя очередь перед ним есть | manual | 9d | 2018-07-02 | 2018-07-12 |  |
| 80 | 1.9.5.5 | Время обработки партии превысило норму более, чем на 10% | manual | 9d | 2018-07-02 | 2018-07-12 |  |
